# Overlord

Schedule from GanttProject, 2024-02-07 to 2024-06-19, baseline: 1ster Plan.
HTL Saalfelden
Holidays every year on 01-01, 01-06, 05-01, 08-15, 10-26, 11-01, 12-08, 12-24, 12-25, 12-26, 12-31

## Calendars

- Project calendar: Mon-Tue off; Wed working; Thu off; Fri working; Sat-Sun off. Exceptions (off unless hours are given): 2024-02-14 (Urlaub am 14.02.24, 00:00), 2024-02-16 (Urlaub am 16.02.24, 00:00), 2024-03-27 (Urlaub am 27.03.24, 00:00), 2024-03-29 (Urlaub am 29.03.24, 00:00).

## Resources

| Resource |
| --- |
| Jonas |
| Florian |
| Philip |

## Schedule

| ID | WBS | Task | Duration | Start | Finish | Predecessors | Baseline start | Baseline finish | Baseline duration | Resources |
| --- | --- | --- | --- | --- | --- | --- | --- | --- | --- | --- |
| 1 | 1 | **Sandbox** | 34d | 2024-02-07 | 2024-06-19 |  | 2024-02-07 | 2024-06-14 | 33d | Jonas [50%]; Florian [90%]; Philip [5%] |
| 2 | 1.1 | Geradlinige Map | 4d | 2024-02-07 | 2024-02-23 |  | 2024-02-07 | 2024-02-09 | 2d |  |
| 3 | 1.2 | **Spielerfigur** | 23d | 2024-02-07 | 2024-05-10 |  | 2024-02-07 | 2024-04-17 | 17d | Philip [30%] |
| 4 | 1.2.1 | Einfache Steuerung Figur | 2d | 2024-02-07 | 2024-02-09 |  | 2024-02-07 | 2024-02-09 | 2d |  |
| 5 | 1.2.2 | Grafik Figur | 4d | 2024-02-07 | 2024-02-23 |  | 2024-02-07 | 2024-02-23 | 4d |  |
| 6 | 1.2.3 | Sounds einfügen | 4d | 2024-02-28 | 2024-03-08 | 4FS+1d, 5 | 2024-02-28 | 2024-03-08 | 4d |  |
| 7 | 1.2.4 | Items aufsammeln | 5d | 2024-04-24 | 2024-05-10 | 5, 10FS+1d | 2024-04-03 | 2024-04-17 | 5d |  |
| 8 | 1.3 | **Items** | 15d | 2024-02-21 | 2024-04-17 |  | 2024-02-21 | 2024-03-20 | 9d | Jonas [20%]; Florian [10%]; Philip [10%] |
| 9 | 1.3.1 | Items spawnen | 8d | 2024-02-21 | 2024-03-15 |  | 2024-02-21 | 2024-03-01 | 4d |  |
| 10 | 1.3.2 | Effekte von Items | 6d | 2024-03-22 | 2024-04-17 | 9FS+1d | 2024-03-08 | 2024-03-20 | 4d |  |
| 11 | 1.4 | **Mapbauen** | 6d | 2024-05-15 | 2024-05-31 | 3 | 2024-04-24 | 2024-05-15 | 6d | Jonas [50%]; Florian [50%]; Philip [5%] |
| 12 | 1.4.1 | Statische Hindernisse | 2d | 2024-05-15 | 2024-05-17 |  | 2024-04-24 | 2024-04-26 | 2d |  |
| 13 | 1.4.2 | Bewegende Hindernisse | 2d | 2024-05-22 | 2024-05-24 | 12 | 2024-05-03 | 2024-05-08 | 2d |  |
| 14 | 1.4.3 | Mehrere Fortbewegungsobjekt | 2d | 2024-05-29 | 2024-05-31 | 13 | 2024-05-10 | 2024-05-15 | 2d |  |
| 15 | 1.5 | **Savestates** | 16d | 2024-03-15 | 2024-05-17 |  | 2024-02-28 | 2024-04-03 | 9d | Philip [50%] |
| 16 | 1.5.1 | Checkpoints | 3d | 2024-03-15 | 2024-03-22 |  | 2024-02-28 | 2024-03-06 | 3d |  |
| 17 | 1.5.2 | Stats speichern in Datei | 3d | 2024-04-03 | 2024-04-10 | 16 | 2024-03-08 | 2024-03-15 | 3d |  |
| 18 | 1.5.3 | Mehrere Speicherstände | 10d | 2024-04-12 | 2024-05-17 | 17 | 2024-03-20 | 2024-04-03 | 3d |  |
| 19 | 1.6 | **NPC** | 3d | 2024-06-05 | 2024-06-12 | 11 | 2024-05-17 | 2024-05-24 | 3d | Florian |
| 20 | 1.6.1 | Erste NPC (interaktionen) | 1d | 2024-06-05 | 2024-06-05 |  | 2024-05-17 | 2024-05-17 | 1d |  |
| 21 | 1.6.2 | Erste feindliche KI | 1d | 2024-06-07 | 2024-06-07 | 20 | 2024-05-22 | 2024-05-22 | 1d |  |
| 22 | 1.6.3 | Mehrere Feindliche KIs | 1d | 2024-06-12 | 2024-06-12 | 21 | 2024-05-24 | 2024-05-24 | 1d |  |
| 23 | 1.7 | **Menü** | 11d | 2024-04-03 | 2024-05-10 |  | 2024-02-09 | 2024-04-03 | 12d | Philip [20%] |
| 24 | 1.7.1 | **Einstellungen** | 6d | 2024-04-19 | 2024-05-10 |  | 2024-02-09 | 2024-03-06 | 6d | Philip [25%] |
| 25 | 1.7.1.1 | Musiklautstärke | 2d | 2024-04-19 | 2024-04-24 |  | 2024-02-09 | 2024-02-21 | 2d |  |
| 26 | 1.7.1.2 | Steuerungskonfiguration | 4d | 2024-04-26 | 2024-05-10 | 4, 25 | 2024-02-23 | 2024-03-06 | 4d |  |
| 27 | 1.7.2 | Menü (Overworld) | 10d | 2024-04-03 | 2024-05-08 |  | 2024-03-20 | 2024-04-03 | 3d |  |

| ID | WBS | Task | Type | Duration | Start | Finish | Predecessors | Baseline start | Baseline finish | Baseline duration | Resources |
| --- | --- | --- | --- | --- | --- | --- | --- | --- | --- | --- | --- |
| 28 | 1.8 | **Musik** |  | 11d | 2024-05-15 | 2024-06-19 |  | 2024-04-19 | 2024-05-31 | 12d | Philip [10%] |
| 29 | 1.8.1 | Hintergrundmusik |  | 1d | 2024-06-05 | 2024-06-05 | 11 | 2024-05-17 | 2024-05-17 | 1d |  |
| 30 | 1.8.2 | Spielersounds |  | 1d | 2024-05-15 | 2024-05-15 | 3 | 2024-04-19 | 2024-04-19 | 1d |  |
| 31 | 1.8.3 | NPC sounds |  | 2d | 2024-06-14 | 2024-06-19 | 19 | 2024-05-29 | 2024-05-31 | 2d |  |
| 32 | 1.9 | Zwischenpresentation | milestone | 0d | 2024-03-22 | 2024-03-22 |  | 2024-03-22 | 2024-03-22 | 0d |  |
| 33 | 1.10 | Endtermin | milestone | 0d | 2024-06-19 | 2024-06-19 |  | 2024-06-19 | 2024-06-19 | 0d |  |
